# Simple Project Plan

Schedule from MS Project, 2016-04-04 to 2017-05-29, A marks actual dates.

## Calendars

- 24 Stunden: Mon-Sun 00:00-24:00. Exceptions (off unless hours are given): 2016-07-20 to 2016-10-02, 2016-12-16 to 2016-12-26.

## Resources

| Resource |
| --- |
| Marie-Kristin Kaiser |
| Nicolas Huentz |
| Daniel Stumpf |

## Schedule

| ID | WBS | Task | Type | Duration | Start | Finish | Predecessors | Complete | Constraint | Resources | Work | Actual work |
| --- | --- | --- | --- | --- | --- | --- | --- | --- | --- | --- | --- | --- |
| 1 | 1 | **Projekt Dobby** |  | 1002d? | 2016-04-04 A | 2017-05-29 A |  | 100% |  |  | 3091.2h | 3091.2h |
| 2 | 1.1 | **App** |  | 778.12d | 2016-04-06 A | 2017-03-17 A |  | 100% |  |  | 533.2h | 533.2h |
| 3 | 1.1.1 | **Version 1** |  | 82.12d | 2016-04-06 A | 2016-05-03 A |  | 100% |  |  | 100h | 100h |
| 4 | 1.1.1.1 | Informationsbeschaffung |  | 20d | 2016-04-06 A | 2016-05-03 A | 101 | 100% | start no earlier than 2016-04-04 | Marie-Kristin Kaiser [10%] | 16h | 16h |
| 5 | 1.1.1.2 | Grundgerüst |  | 7d | 2016-04-06 A | 2016-04-14 A | 101 | 100% | start no earlier than 2016-04-04 | Marie-Kristin Kaiser [70%] | 39.2h | 39.2h |
| 6 | 1.1.1.3 | Einloggen |  | 1d | 2016-04-15 A | 2016-04-15 A | 5 | 100% |  | Marie-Kristin Kaiser [70%] | 5.6h | 5.6h |
| 7 | 1.1.1.4 | Menü |  | 4d | 2016-04-18 A | 2016-04-21 A | 6 | 100% |  | Marie-Kristin Kaiser [70%] | 22.4h | 22.4h |
| 8 | 1.1.1.5 | Verbinden |  | 2d | 2016-04-22 A | 2016-04-25 A | 7, 39 | 100% |  | Marie-Kristin Kaiser [70%] | 11.2h | 11.2h |
| 9 | 1.1.1.6 | Kommunizieren |  | 1d | 2016-04-26 A | 2016-04-26 A | 8 | 100% |  | Marie-Kristin Kaiser [70%] | 5.6h | 5.6h |
| 10 | 1.1.2 | **Version 2** |  | 463.12d | 2016-10-03 A | 2017-03-17 A |  | 100% |  |  | 433.2h | 433.2h |
| 11 | 1.1.2.1 | Informationsbeschaffung |  | 115d | 2016-10-03 A | 2017-03-10 A | 9 | 100% | start no earlier than 2016-10-03 | Marie-Kristin Kaiser [10%] | 92h | 92h |
| 12 | 1.1.2.2 | Grundgerüst |  | 14d | 2016-12-05 A | 2016-12-22 A | 9 | 100% | start no earlier than 2016-12-05 | Marie-Kristin Kaiser [40%] | 44.8h | 44.8h |
| 13 | 1.1.2.3 | Verbindung/Kommunikation |  | 3d | 2016-12-23 A | 2016-12-27 A | 12 | 100% |  | Marie-Kristin Kaiser [80%] | 19.2h | 19.2h |
| 14 | 1.1.2.4 | Einloggen |  | 3d | 2016-12-28 A | 2016-12-30 A | 13 | 100% |  | Marie-Kristin Kaiser [80%] | 19.2h | 19.2h |
| 15 | 1.1.2.5 | Konsole [Entwickler] |  | 3d | 2017-01-02 A | 2017-01-04 A | 14 | 100% |  | Marie-Kristin Kaiser [65%] | 15.6h | 15.6h |
| 16 | 1.1.2.6 | Moduswahl |  | 7d | 2017-01-05 A | 2017-01-13 A | 15 | 100% |  | Marie-Kristin Kaiser [65%] | 36.4h | 36.4h |
| 17 | 1.1.2.7 | 3D Modell |  | 35d | 2017-01-19 A | 2017-03-08 A | 20 | 100% |  | Marie-Kristin Kaiser [55%] | 154h | 154h |
| 18 | 1.1.2.8 | Kamerabild Anzeige |  | 7d | 2017-03-09 A | 2017-03-17 A | 17, 34 | 100% |  | Marie-Kristin Kaiser [65%] | 36.4h | 36.4h |
| 19 | 1.1.2.9 | **Steuerelemente** |  | 7.12d | 2017-01-16 A | 2017-01-18 A |  | 100% |  |  | 15.6h | 15.6h |
| 20 | 1.1.2.9.1 | Joystick |  | 3d | 2017-01-16 A | 2017-01-18 A | 16 | 100% |  | Marie-Kristin Kaiser [65%] | 15.6h | 15.6h |
| 21 | 1.1.3 | App abgeschlossen | milestone | 0d | 2017-03-17 A | 2017-03-17 A | 18 | 100% |  |  |  |  |
| 22 | 1.2 | **RaspberryPi** |  | 673.12d | 2016-04-04 A | 2017-02-08 A |  | 100% |  |  | 632h | 632h |
| 23 | 1.2.1 | **Sensor** |  | 391.12d | 2016-04-18 A | 2016-11-09 A |  | 100% |  |  | 100h | 100h |
| 24 | 1.2.1.1 | Informationsbeschaffung |  | 5d | 2016-04-18 A | 2016-04-22 A | 39 | 100% |  | Nicolas Huentz [70%] | 28h | 28h |
| 25 | 1.2.1.2 | Konfiguration |  | 2d | 2016-04-25 A | 2016-04-26 A | 24 | 100% |  | Nicolas Huentz [70%] | 11.2h | 11.2h |
| 26 | 1.2.1.3 | Verbindung [Ethernet] |  | 2d | 2016-04-27 A | 2016-04-28 A | 25 | 100% |  | Nicolas Huentz [70%] | 11.2h | 11.2h |
| 27 | 1.2.1.4 | Werte auswerten |  | 5d | 2016-04-29 A | 2016-05-05 A | 26 | 100% |  | Nicolas Huentz [70%] | 28h | 28h |
| 28 | 1.2.1.5 | Sensor de-/aktivieren |  | 3d | 2016-11-07 A | 2016-11-09 A | 27 | 100% | start no earlier than 2016-11-07 | Nicolas Huentz [90%] | 21.6h | 21.6h |

| ID | WBS | Task | Type | Duration | Start | Finish | Predecessors | Complete | Constraint | Resources | Work | Actual work |
| --- | --- | --- | --- | --- | --- | --- | --- | --- | --- | --- | --- | --- |
| 29 | 1.2.2 | **Object Tracking** |  | 184.12d | 2016-11-28 A | 2017-02-08 A |  | 100% |  |  | 300h | 300h |
| 30 | 1.2.2.1 | Informationsbeschaffung |  | 10d | 2016-11-28 A | 2016-12-09 A | 28 | 100% | start no earlier than 2016-11-27 | Nicolas Huentz [35%] | 28h | 28h |
| 31 | 1.2.2.2 | Kamera einbinden |  | 2d | 2016-12-12 A | 2016-12-13 A | 30 | 100% |  | Nicolas Huentz [50%] | 8h | 8h |
| 32 | 1.2.2.3 | Bild erzeugen |  | 2d | 2016-12-14 A | 2016-12-15 A | 31 | 100% |  | Nicolas Huentz [90%] | 14.4h | 14.4h |
| 33 | 1.2.2.4 | Bild auswerten |  | 35d | 2016-12-16 A | 2017-02-02 A | 32 | 100% |  | Nicolas Huentz [80%] | 224h | 224h |
| 34 | 1.2.2.5 | Bild versenden |  | 4d | 2017-02-03 A | 2017-02-08 A | 33 | 100% |  | Nicolas Huentz [80%] | 25.6h | 25.6h |
| 35 | 1.2.3 | **Verbindung** |  | 34.12d | 2016-04-04 A | 2016-04-15 A |  | 100% |  |  | 56h | 56h |
| 36 | 1.2.3.1 | Informationsbeschaffung |  | 5d | 2016-04-04 A | 2016-04-08 A |  | 100% |  | Nicolas Huentz [70%] | 28h | 28h |
| 37 | 1.2.3.2 | AccessPoint |  | 2d | 2016-04-11 A | 2016-04-12 A | 36 | 100% |  | Nicolas Huentz [70%] | 11.2h | 11.2h |
| 38 | 1.2.3.3 | Schnittstellenkonfiguration |  | 1d | 2016-04-13 A | 2016-04-13 A | 37 | 100% |  | Nicolas Huentz [70%] | 5.6h | 5.6h |
| 39 | 1.2.3.4 | WebSocket |  | 2d | 2016-04-14 A | 2016-04-15 A | 38 | 100% |  | Nicolas Huentz [70%] | 11.2h | 11.2h |
| 40 | 1.2.4 | Konfiguration |  | 220d | 2016-04-04 A | 2017-02-03 A |  | 100% |  | Nicolas Huentz [7%] | 123.2h | 123.2h |
| 41 | 1.2.5 | Updates |  | 220d | 2016-04-04 A | 2017-02-03 A |  | 100% |  | Nicolas Huentz [1%] | 17.6h | 17.6h |
| 42 | 1.2.6 | Fehlerbehebung |  | 220d | 2016-04-04 A | 2017-02-03 A |  | 100% |  | Nicolas Huentz [2%] | 35.2h | 35.2h |
| 43 | 1.2.7 | RaspberryPi abgeschlossen | milestone | 0d | 2017-02-08 A | 2017-02-08 A | 34, 40, 41, 42 | 100% |  |  |  |  |
| 44 | 1.3 | **Motoren** |  | 385.12d | 2016-04-04 A | 2016-10-24 A |  | 100% |  |  | 808.8h | 808.8h |
| 45 | 1.3.1 | Grundlagen [Informationen] |  | 20d | 2016-04-04 A | 2016-04-29 A |  | 100% |  | Daniel Stumpf [80%] | 128h | 128h |
| 46 | 1.3.2 | **Transceiver** |  | 52.12d | 2016-05-02 A | 2016-05-19 A |  | 100% |  |  | 76.8h | 76.8h |
| 47 | 1.3.2.1 | Entwurf |  | 3d | 2016-05-02 A | 2016-05-04 A | 45 | 100% |  | Daniel Stumpf [80%] | 19.2h | 19.2h |
| 48 | 1.3.2.2 | Montage |  | 1d | 2016-05-05 A | 2016-05-05 A | 47 | 100% |  | Daniel Stumpf [80%] | 6.4h | 6.4h |
| 49 | 1.3.2.3 | Systemtest |  | 6d | 2016-05-06 A | 2016-05-13 A | 48 | 100% |  | Daniel Stumpf [40%] | 19.2h | 19.2h |
| 50 | 1.3.2.4 | Fehlerbehebung |  | 10d | 2016-05-06 A | 2016-05-19 A | 48 | 100% |  | Daniel Stumpf [40%] | 32h | 32h |
| 51 | 1.3.3 | **Ansteuerung** |  | 112.12d | 2016-07-04 A | 2016-10-24 A |  | 100% |  |  | 604h | 604h |
| 52 | 1.3.3.1 | Implementierung |  | 70d | 2016-07-04 A | 2016-10-07 A | 50 | 100% | start no earlier than 2016-07-04 | Daniel Stumpf [95%] | 532h | 532h |
| 53 | 1.3.3.2 | Integration in das Hauptprogramm |  | 1d | 2016-10-10 A | 2016-10-10 A | 52 | 100% |  | Daniel Stumpf | 8h | 8h |
| 54 | 1.3.3.3 | Systemtest |  | 10d | 2016-10-11 A | 2016-10-24 A | 53 | 100% |  | Daniel Stumpf [50%] | 40h | 40h |
| 55 | 1.3.3.4 | Fehlerbehebung |  | 6d | 2016-10-11 A | 2016-10-18 A | 53 | 100% |  | Daniel Stumpf [50%] | 24h | 24h |
| 56 | 1.3.4 | Motoren abgeschlossen | milestone | 0d | 2016-10-24 A | 2016-10-24 A | 55, 54 | 100% |  |  |  |  |

| ID | WBS | Task | Duration | Start | Finish | Predecessors | Complete | Constraint | Resources | Work | Actual work |
| --- | --- | --- | --- | --- | --- | --- | --- | --- | --- | --- | --- |
| 57 | 1.4 | **Mechanik** | 532.12d | 2016-04-04 A | 2016-12-12 A |  | 100% |  |  | 176.4h | 176.4h |
| 58 | 1.4.1 | Konzeptionierung | 20d | 2016-04-04 A | 2016-04-29 A |  | 100% |  | Daniel Stumpf [10%]; Nicolas Huentz [10%]; Marie-Kristin Kaiser [10%] | 48h | 48h |
| 59 | 1.4.2 | Materialauslegung | 40d | 2016-05-02 A | 2016-06-24 A | 58 | 100% |  | Nicolas Huentz [10%]; Daniel Stumpf [10%]; Marie-Kristin Kaiser [10%] | 96h | 96h |
| 60 | 1.4.3 | **Montage** | 259.12d | 2016-06-27 A | 2016-12-05 A |  | 100% |  |  | 8.4h | 8.4h |
| 61 | 1.4.3.1 | Antriebsstrang | 2d | 2016-06-29 A | 2016-06-30 A | 63 | 100% |  | Daniel Stumpf [5%] | 0.8h | 0.8h |
| 62 | 1.4.3.2 | Holzverkleidung | 2d | 2016-07-01 A | 2016-07-04 A | 61 | 100% |  | Nicolas Huentz [5%] | 0.8h | 0.8h |
| 63 | 1.4.3.3 | Chassis | 2d | 2016-06-27 A | 2016-06-28 A | 59 | 100% |  | Nicolas Huentz [5%]; Daniel Stumpf [5%]; Marie-Kristin Kaiser [5%] | 2.4h | 2.4h |
| 64 | 1.4.3.4 | Sensor | 2d | 2016-07-05 A | 2016-07-06 A | 62 | 100% |  | Marie-Kristin Kaiser [5%] | 0.8h | 0.8h |
| 65 | 1.4.3.5 | RaspberryPi | 2d | 2016-07-11 A | 2016-07-12 A | 66 | 100% |  | Marie-Kristin Kaiser [5%] | 0.8h | 0.8h |
| 66 | 1.4.3.6 | Kamera | 2d | 2016-07-07 A | 2016-07-08 A | 64 | 100% |  | Daniel Stumpf [5%] | 0.8h | 0.8h |
| 67 | 1.4.3.7 | Akkus | 5d | 2016-11-29 A | 2016-12-05 A | 65 | 100% | start no earlier than 2016-11-29 | Nicolas Huentz [5%] | 2h | 2h |
| 68 | 1.4.4 | Fehlerbehebung | 5d | 2016-12-06 A | 2016-12-12 A | 67 | 100% |  | Nicolas Huentz [10%]; Marie-Kristin Kaiser [10%]; Daniel Stumpf [10%] | 12h | 12h |
| 69 | 1.4.5 | Systemtest | 5d | 2016-12-06 A | 2016-12-12 A | 67 | 100% |  | Nicolas Huentz [10%]; Marie-Kristin Kaiser [10%]; Daniel Stumpf [10%] | 12h | 12h |
| 70 | 1.5 | **Elektronik** | 532.12d | 2016-04-04 A | 2016-12-12 A |  | 100% |  |  | 172h | 172h |
| 71 | 1.5.1 | Konzeptionierung | 20d | 2016-04-04 A | 2016-04-29 A |  | 100% |  | Daniel Stumpf [10%]; Nicolas Huentz [10%]; Marie-Kristin Kaiser [10%] | 48h | 48h |
| 72 | 1.5.2 | Materialauslegung | 40d | 2016-05-02 A | 2016-06-24 A | 71 | 100% |  | Daniel Stumpf [10%]; Nicolas Huentz [10%]; Marie-Kristin Kaiser [10%] | 96h | 96h |
| 73 | 1.5.3 | **Montage** | 25.12d | 2016-06-27 A | 2016-07-05 A |  | 100% |  |  | 4h | 4h |
| 74 | 1.5.3.1 | Reihenklemmen | 1d | 2016-06-27 A | 2016-06-27 A | 72 | 100% |  | Marie-Kristin Kaiser [5%] | 0.4h | 0.4h |
| 75 | 1.5.3.2 | Verdrahtung | 2d | 2016-06-28 A | 2016-06-29 A | 74 | 100% |  | Daniel Stumpf [10%] | 1.6h | 1.6h |
| 76 | 1.5.3.3 | Steckermontage | 1d | 2016-06-30 A | 2016-06-30 A | 75 | 100% |  | Daniel Stumpf [5%]; Nicolas Huentz [5%] | 0.8h | 0.8h |
| 77 | 1.5.3.4 | Ladegerät | 3d | 2016-07-01 A | 2016-07-05 A | 76 | 100% |  | Marie-Kristin Kaiser [5%] | 1.2h | 1.2h |
| 78 | 1.5.4 | Systemtest | 5d | 2016-12-06 A | 2016-12-12 A | 77 | 100% | start no earlier than 2016-12-06 | Nicolas Huentz [10%]; Marie-Kristin Kaiser [10%]; Daniel Stumpf [10%] | 12h | 12h |
| 79 | 1.5.5 | Fehlerbehebung | 5d | 2016-12-06 A | 2016-12-12 A | 77 | 100% | start no earlier than 2016-12-06 | Nicolas Huentz [10%]; Marie-Kristin Kaiser [10%]; Daniel Stumpf [10%] | 12h | 12h |
| 80 | 1.6 | **Kontrolle** | 490.12d | 2016-10-25 A | 2017-04-17 A |  | 100% |  |  | 540h | 540h |
| 81 | 1.6.1 | **Testen** | 304.12d | 2017-01-02 A | 2017-04-13 A |  | 100% |  |  | 408h | 408h |
| 82 | 1.6.1.1 | **App** | 238.12d | 2017-01-02 A | 2017-03-22 A |  | 100% |  |  | 72h | 72h |
| 83 | 1.6.1.1.1 | Cucumber | 52d | 2017-01-02 A | 2017-03-14 A | 14 | 100% |  | Marie-Kristin Kaiser [5%] | 20.8h | 20.8h |
| 84 | 1.6.1.1.2 | Monkey | 3d | 2017-03-20 A | 2017-03-22 A | 21 | 100% |  | Marie-Kristin Kaiser [40%] | 9.6h | 9.6h |
| 85 | 1.6.1.1.3 | Unit Test | 52d | 2017-01-02 A | 2017-03-14 A | 14 | 100% |  | Marie-Kristin Kaiser [10%] | 41.6h | 41.6h |
| 86 | 1.6.1.2 | Testszenarien (Tauglichkeit) | 10d | 2017-03-31 A | 2017-04-13 A | 90 | 100% |  | Daniel Stumpf [90%]; Marie-Kristin Kaiser [90%]; Nicolas Huentz [90%] | 216h | 216h |
| 87 | 1.6.1.3 | Systemtest | 5d | 2017-03-20 A | 2017-03-24 A | 21, 43, 56 | 100% |  | Daniel Stumpf [90%]; Marie-Kristin Kaiser [40%]; Nicolas Huentz [90%] | 88h | 88h |
| 88 | 1.6.1.4 | RaspberryPi | 10d | 2017-02-09 A | 2017-02-22 A | 43 | 100% |  | Nicolas Huentz [40%] | 32h | 32h |

| ID | WBS | Task | Type | Duration | Start | Finish | Predecessors | Complete | Constraint | Resources | Work | Actual work |
| --- | --- | --- | --- | --- | --- | --- | --- | --- | --- | --- | --- | --- |
| 89 | 1.6.2 | **Prüfen** |  | 436.12d | 2016-10-25 A | 2017-03-30 A |  | 100% |  |  | 52h | 52h |
| 90 | 1.6.2.1 | Geschwindigkeitsprüfung |  | 2d | 2017-03-29 A | 2017-03-30 A | 92, 93 | 100% |  | Daniel Stumpf [90%] | 14.4h | 14.4h |
| 91 | 1.6.2.2 | Belastungsprüfung |  | 1d | 2016-12-06 A | 2016-12-06 A | 67 | 100% |  | Daniel Stumpf [60%] | 4.8h | 4.8h |
| 92 | 1.6.2.3 | Stromprüfung |  | 2d | 2017-03-27 A | 2017-03-28 A | 87 | 100% |  | Daniel Stumpf [45%] | 7.2h | 7.2h |
| 93 | 1.6.2.4 | Spannungsprüfung |  | 2d | 2017-03-27 A | 2017-03-28 A | 87 | 100% |  | Daniel Stumpf [45%] | 7.2h | 7.2h |
| 94 | 1.6.2.5 | Sensorprüfung |  | 1d | 2017-02-09 A | 2017-02-09 A | 43 | 100% |  | Nicolas Huentz [50%] | 4h | 4h |
| 95 | 1.6.2.6 | Frame-Prüfung |  | 2d | 2016-10-25 A | 2016-10-26 A | 56 | 100% |  | Nicolas Huentz [90%] | 14.4h | 14.4h |
| 96 | 1.6.3 | **Messen** |  | 361.12d | 2016-12-07 A | 2017-04-17 A |  | 100% |  |  | 80h | 80h |
| 97 | 1.6.3.1 | Terrainunterschiede |  | 3d | 2017-04-14 A | 2017-04-17 A | 86 | 100% |  | Daniel Stumpf [90%]; Marie-Kristin Kaiser [90%]; Nicolas Huentz [90%] | 64.8h | 64.8h |
| 98 | 1.6.3.2 | Sensorgenauigkeit |  | 2d | 2017-02-10 A | 2017-02-13 A | 94 | 100% |  | Marie-Kristin Kaiser [10%]; Nicolas Huentz [50%] | 5.6h | 5.6h |
| 99 | 1.6.3.3 | Belastungsmessung |  | 3d | 2016-12-07 A | 2016-12-09 A | 91 | 100% |  | Daniel Stumpf [60%]; Marie-Kristin Kaiser [10%]; Nicolas Huentz [10%] | 9.6h | 9.6h |
| 100 | 1.7 | **Dokumentation** |  | 1002d? | 2016-04-04 A | 2017-05-29 A |  | 100% |  |  | 228.8h | 228.8h |
| 101 | 1.7.1 | Logo |  | 2d | 2016-04-04 A | 2016-04-05 A |  | 100% |  | Marie-Kristin Kaiser [80%] | 12.8h | 12.8h |
| 102 | 1.7.2 | Schriftliche Ausarbeitung |  | 90d | 2016-12-27 A | 2017-04-28 A | 101 | 100% | start no earlier than 2016-12-27 | Daniel Stumpf [10%]; Marie-Kristin Kaiser [10%]; Nicolas Huentz [10%] | 216h | 216h |
| 103 | 1.7.3 | Zwischenstand | milestone, manual | 0d | 2017-01-10 A | 2017-01-10 A |  | 100% | start no earlier than 2017-01-10 |  |  |  |
| 104 | 1.7.4 | Status-Quo | milestone, manual | 0d | 2017-03-28 A | 2017-03-28 A |  | 100% | start no earlier than 2017-03-28 |  |  |  |
| 105 | 1.7.5 | Projektabschluss | milestone, manual | 0d | 2017-04-15 A | 2017-04-15 A |  | 100% | start no earlier than 2017-04-15 |  |  |  |
| 106 | 1.7.6 | Abgabe Studienarbeit | milestone, manual | 0d | 2017-05-15 A | 2017-05-15 A |  | 100% | start no earlier than 2017-05-15 |  |  |  |
| 107 | 1.7.7 | Notenabgabe Studienarbeit | milestone, manual | 0d | 2017-05-29 A | 2017-05-29 A |  | 100% |  |  |  |  |
